# Phyloloc

Schedule from MS Project, 2011-04-19 to 2011-05-09, A marks actual dates.

## Calendars

- Standard: Mon-Fri 08:00-12:00, 13:00-17:00; Sat-Sun off.

## Resources

| Resource |
| --- |
| CC |
| DD |
| ET |
| NB |

## Schedule

| ID | WBS | Task | Type | Duration | Start | Finish | Predecessors | Complete | Remaining | Actual start | Total slack | Resources | Work | Actual work |
| --- | --- | --- | --- | --- | --- | --- | --- | --- | --- | --- | --- | --- | --- | --- |
| 1 | 1 | **Phyloloc** |  | 15d? | 2011-04-19 A | 2011-05-09 |  | 10% | 13.49d? |  | 0d |  | 396h | 62.4h |
| 2 | 1.1 | **Iteracion 1** |  | 0d | 2011-04-22 | 2011-04-22 |  | 12% | 0d | 2011-04-19 |  |  | 396h | 62.4h |
| 3 | 1.1.1 | **Desarrollo** |  | 14d | 2011-04-19 A | 2011-05-06 |  | 12% | 12.32d |  | 0d |  | 396h | 62.4h |
| 4 | 1.1.1.1 | Tareas Iniciales | manual | 10d | 2011-04-19 | 2011-05-01 |  |  |  |  |  | CC [10%]; DD [10%]; ET [10%]; NB [10%] | 32h |  |
| 5 | 1.1.1.2 | T01 Domain | manual | 3d | 2011-04-19 A | 2011-04-21 |  | 70% | 0.9d |  |  | CC; DD | 48h | 33.6h |
| 6 | 1.1.1.3 | T02 Carga y Guardado | manual | 4d | 2011-04-22 | 2011-04-27 | 5 |  |  |  |  | ET | 32h |  |
| 7 | 1.1.1.4 | T03 Carga de Locaciones | manual | 3d | 2011-04-22 | 2011-04-26 | 5 |  |  |  |  | DD | 24h |  |
| 8 | 1.1.1.5 | T04 Traverser | manual | 3d | 2011-04-19 A | 2011-04-21 | 5FS-3d | 60% | 1.2d |  |  | CC | 24h | 14.4h |
| 9 | 1.1.1.6 | T05 Facade | manual | 3d | 2011-04-25 | 2011-04-27 | 6FS-3d, 7FS-3d, 8FS-3d |  |  |  |  | CC | 24h |  |
| 10 | 1.1.1.7 | T06 App y menú principal | manual | 3d | 2011-04-20 A | 2011-04-22 |  | 60% | 1.2d |  |  | ET | 24h | 14.4h |
| 11 | 1.1.1.8 | T07 Visualización de arboles | manual | 10d | 2011-04-19 | 2011-05-01 | 5FS-3d |  |  |  |  | NB | 80h |  |
| 12 | 1.1.1.9 | T08 Seleccionar y Colorear Nodos | manual | 2d | 2011-04-29 | 2011-05-01 | 11FS-4d |  |  |  |  | ET | 16h |  |
| 13 | 1.1.1.10 | T09 Sel ancestros y desc | manual | 1.5d | 2011-04-29 | 2011-05-01 | 11FS-4d |  |  |  |  | DD | 12h |  |
| 14 | 1.1.1.11 | **Testing** |  | 5d | 2011-05-02 | 2011-05-06 |  |  |  |  | 0d |  | 80h |  |
| 15 | 1.1.1.11.1 | Test Funcional e Integracion | manual | 5d | 2011-05-02 | 2011-05-06 | 5, 6, 7, 8, 9, 10, 11, 12, 13 |  |  |  |  | DD; NB | 80h |  |
| 16 | 1.2 | **Iteracion 2** |  | 1d? | 2011-05-06 | 2011-05-09 | 15 |  |  |  | 0d |  |  |  |
| 17 | 1.2.1 | T10 Recorrida del árbol de hojas a raiz | manual | 1d? | 2011-05-06 | 2011-05-09 |  |  |  |  |  |  |  |  |
| 18 | 1.2.2 | T11 Propagación de probabilidades | manual | 1d? | 2011-05-06 | 2011-05-09 |  |  |  |  |  |  |  |  |
| 19 | 1.2.3 | T12 Factores de corrección | manual | 1d? | 2011-05-06 | 2011-05-09 |  |  |  |  |  |  |  |  |
| 20 | 1.2.4 | T13 Pantalla de Configuración de Propagación | manual | 1d? | 2011-05-06 | 2011-05-09 |  |  |  |  |  |  |  |  |
| 21 | 1.3 | **Iteracion 3** |  | 1d | 2011-04-22 | 2011-04-22 |  |  |  |  | 0d |  |  |  |
| 22 | 1.3.1 | T14 Consenso Estricto | manual | 1d | 2011-04-22 | 2011-04-22 |  |  |  |  |  |  |  |  |
| 23 | 1.3.2 | T15 Consensor Factory | manual | 1d | 2011-04-22 | 2011-04-22 |  |  |  |  |  |  |  |  |
| 24 | 1.3.3 | T16 Observador de Consensor | manual | 1d | 2011-04-22 | 2011-04-22 |  |  |  |  |  |  |  |  |
| 25 | 1.3.4 | T17 Pantalla de Informacion de Consenso | manual | 1d | 2011-04-22 | 2011-04-22 |  |  |  |  |  |  |  |  |
| 26 | 1.3.5 | T18 Expansion y Colapso de Nodos | manual | 1d | 2011-04-22 | 2011-04-22 |  |  |  |  |  |  |  |  |
